# WebAgenda

How a schedule from MS Project changed from version to version. A marks actual dates.

## Version 1 (saved 2010-01-27, file WebAgenda.mpp)

Note of the change: Gantt Chart completed (barring future changes that are sure to happen as we go). Completion values included from Mark, and task names have been changed to match the new class/DB structure.

| ID | WBS | Task | Duration | Start | Finish | Predecessors | Complete | Total float | Constraint |
| --- | --- | --- | --- | --- | --- | --- | --- | --- | --- |
| 1 | 1 | **Documentation** | 60d? | 2010-01-15 A | 2010-04-08 |  | 25% | 0d |  |
| 2 |  | Documentation Creation (Ongoing) | 60d? | 2010-01-15 | 2010-04-08 |  |  | 0d | start no earlier than 2010-01-15 |
| 3 |  | Team Charter | 5d? | 2010-01-19 A | 2010-01-25 A |  | 100% |  | start no earlier than 2010-01-19 |
| 4 |  | Initial Gantt Chart | 5d? | 2010-01-19 A | 2010-01-25 A |  | 100% |  | start no earlier than 2010-01-19 |
| 5 |  | Design Document | 12d? | 2010-01-19 A | 2010-02-03 |  | 85% | 46d | start no earlier than 2010-01-19 |
| 6 | 2 | **Database** | 19d? | 2010-01-18 A | 2010-02-11 |  | 41% | 40d |  |
| 7 | 2.1 | **Database Design** | 6d? | 2010-01-18 A | 2010-01-25 |  | 90% | 30d |  |
| 8 |  | Finalize Design | 6d? | 2010-01-18 A | 2010-01-25 |  | 90% | 5d | finish no earlier than 2010-01-25 |
| 9 |  | Table/Attribute Sizes | 5d? | 2010-01-19 A | 2010-01-25 |  | 90% | 30d | start no earlier than 2010-01-19 |
| 10 |  | Design Complete | 0d | 2010-01-25 | 2010-01-25 | 9, 8 |  | 30d | finish no earlier than 2010-01-25 |
| 11 | 2.2 | **Test Data** | 13d? | 2010-01-26 | 2010-02-11 |  |  | 30d |  |
| 12 |  | Data Generated | 5d? | 2010-01-26 | 2010-02-01 | 10 |  | 30d | start no earlier than 2010-01-26 |
| 13 |  | Implemented | 5d? | 2010-02-02 | 2010-02-08 | 12 |  | 30d |  |
| 14 |  | System Backups | 3d? | 2010-02-09 | 2010-02-11 | 13 |  | 40d | start no earlier than 2010-02-09 |
| 15 |  | Test DB Ready | 0d | 2010-02-11 | 2010-02-11 | 13 |  | 27d | finish no earlier than 2010-02-11 |
| 16 | 3 | **API** | 35d? | 2010-01-26 A | 2010-03-15 |  | 2% | 18d |  |
| 17 | 3.1 | **Classes** | 35d? | 2010-01-26 A | 2010-03-15 |  | 2% | 18d |  |
| 18 | 3.1.1 | **Data Objects** | 5d? | 2010-01-26 | 2010-02-01 |  |  | 5d |  |
| 19 |  | Data Classes | 5d? | 2010-01-26 | 2010-02-01 | 8 |  | 5d | start no earlier than 2010-01-26 |
| 20 | 3.1.2 | **Cache** | 5d? | 2010-01-26 A | 2010-02-01 |  | 70% | 48d |  |
| 21 |  | Design/Code | 5d? | 2010-01-26 A | 2010-02-01 |  | 70% | 48d | start no earlier than 2010-01-26 |
| 22 | 3.1.3 | **Brokers** | 10d? | 2010-02-02 | 2010-02-15 |  |  | 5d |  |
| 23 |  | Employee | 10d? | 2010-02-02 | 2010-02-15 | 19 |  | 5d |  |
| 24 |  | Permissions | 10d? | 2010-02-02 | 2010-02-15 | 19 |  | 5d | start no earlier than 2010-02-02 |
| 25 |  | Position | 10d? | 2010-02-02 | 2010-02-15 | 19 |  | 5d | start no earlier than 2010-02-02 |
| 26 |  | Location | 10d? | 2010-02-02 | 2010-02-15 | 19 |  | 5d | start no earlier than 2010-02-02 |
| 27 |  | ShiftTemplate | 10d? | 2010-02-02 | 2010-02-15 | 19 |  | 5d | start no earlier than 2010-02-02 |
| 28 |  | Schedule | 10d? | 2010-02-02 | 2010-02-15 | 19 |  | 5d | start no earlier than 2010-02-02 |
| 29 |  | Notification | 10d? | 2010-02-02 | 2010-02-15 | 19 |  | 5d | start no earlier than 2010-02-02 |
| 30 |  | SystemSettings | 10d? | 2010-02-02 | 2010-02-15 | 19 |  | 5d | start no earlier than 2010-02-02 |
| 31 |  | Brokers Complete | 0d | 2010-02-15 | 2010-02-15 | 23, 24, 28, 27, 25, 26, 29, 30 |  | 5d | finish no earlier than 2010-02-08 |
| 32 | 3.1.5 | **Widgets** | 20d? | 2010-02-16 | 2010-03-15 |  |  | 5d |  |
| 33 |  | Schedule | 20d? | 2010-02-16 | 2010-03-15 | 31 |  | 5d | start no earlier than 2010-02-16 |
| 34 |  | Notifications | 20d? | 2010-02-16 | 2010-03-15 | 31 |  | 5d | start no earlier than 2010-02-16 |
| 35 |  | Settings | 10d? | 2010-02-16 | 2010-03-01 | 31 |  | 15d | start no earlier than 2010-02-16 |
| 36 |  | Users | 10d? | 2010-02-23 | 2010-03-08 | 31 |  | 10d | start no earlier than 2010-02-23 |
| 37 |  | Reports | 10d? | 2010-02-23 | 2010-03-08 | 31 |  | 10d | start no earlier than 2010-02-23 |
| 38 |  | Export | 10d? | 2010-02-23 | 2010-03-08 | 31 |  | 10d | start no earlier than 2010-02-23 |
| 39 |  | Help | 10d? | 2010-02-23 | 2010-03-08 | 31 |  | 10d | start no earlier than 2010-02-23 |
| 40 |  | Mail | 10d? | 2010-03-01 | 2010-03-12 | 31 |  | 6d | start no earlier than 2010-03-01 |
| 41 |  | Quick Links | 5d? | 2010-03-02 | 2010-03-08 | 31 |  | 10d | start no earlier than 2010-03-02 |
| 42 |  | Calendar | 5d? | 2010-03-02 | 2010-03-08 | 31 |  | 23d | start no earlier than 2010-03-02 |
| 43 |  | Widgets Complete | 0d | 2010-03-15 | 2010-03-15 | 33, 34, 35, 40, 36, 37, 38, 39, 41 |  | 5d |  |
| 44 |  | API Complete | 0d | 2010-03-15 | 2010-03-15 | 43 |  | 5d |  |
| 45 | 4 | **Interface / UI Design** | 40d? | 2010-01-19 A | 2010-03-15 |  | 4% | 5d |  |
| 46 |  | Screen Tree | 5d? | 2010-01-19 A | 2010-01-25 |  | 30% | 5.7d | finish no earlier than 2010-01-25 |
| 47 |  | Coding | 35d? | 2010-01-26 A | 2010-03-15 | 46 | 2% | 5d | finish no earlier than 2010-03-15 |
| 48 |  | Integration | 20d? | 2010-02-16 | 2010-03-15 |  |  | 5d | start no earlier than 2010-02-16 |
| 49 |  | Interface Compete | 0d | 2010-03-15 | 2010-03-15 | 46, 47, 48 |  | 5d |  |
| 50 | 5 | **Installer** | 8d? | 2010-03-16 | 2010-03-25 |  |  | 5d |  |
| 51 |  | Part 1 | 2d? | 2010-03-16 | 2010-03-17 | 15, 44, 49 |  | 5d |  |
| 52 |  | Part 2 | 2d? | 2010-03-18 | 2010-03-19 | 51 |  | 5d |  |
| 53 |  | Part 3 | 2d? | 2010-03-22 | 2010-03-23 | 52 |  | 5d |  |
| 54 |  | Licensing | 2d | 2010-03-24 | 2010-03-25 | 53 |  | 5d |  |
| 55 |  | Installer Complete | 0d | 2010-03-25 | 2010-03-25 | 54 |  | 5d |  |
| 56 | 6 | **System Testing** | 13d? | 2010-03-16 | 2010-04-01 |  |  | 5d |  |
| 57 |  | User Testing | 10d? | 2010-03-16 | 2010-03-29 | 15, 44, 49 |  | 8d | start no earlier than 2010-03-16 |
| 58 |  | Load Testing | 10d? | 2010-03-16 | 2010-03-29 | 15, 44, 49 |  | 8d | start no earlier than 2010-03-16 |
| 59 |  | Backup/Recovery Testing | 10d? | 2010-03-16 | 2010-03-29 | 15, 44, 49 |  | 8d | start no earlier than 2010-03-16 |
| 60 |  | Installer Testing | 5d? | 2010-03-26 | 2010-04-01 | 55 |  | 5d |  |

## Version 2 (saved 2010-01-28, file WebAgenda.mpp)

Note of the change: - Reformatted appearance of gantt chart to meet Randy's comments on the printout from our last progress report.

Last finish stays 2010-04-08. Complete tasks 2 → 3.

Changed:

| ID | Task | Finish | Complete | Total float |
| --- | --- | --- | --- | --- |
| 6 | **Database** |  | 41% → 44% |  |
| 7 | **Database Design** |  | 90% → 95% |  |
| 8 | Finalize Design | 2010-01-25 A | 90% → 100% | 5d → none |

## Version 3 (saved 2010-02-02, file WebAgenda.mpp)

Note of the change: - Creation of Application package. - Slight tweak to gantt chart from this morning that was needed to keep the printout on one page.

Last finish stays 2010-04-08.

Changed:

| ID | Task | Start | Complete | Total float |
| --- | --- | --- | --- | --- |
| 1 | **Documentation** |  | 25% → 33% |  |
| 2 | Documentation Creation (Ongoing) | 2010-01-15 A | 0% → 10% |  |
| 5 | Design Document |  | 85% → 95% |  |
| 6 | **Database** |  | 44% → 49% |  |
| 7 | **Database Design** |  | 95% → 98% | 30d → 31d |
| 9 | Table/Attribute Sizes |  | 90% → 95% | 30d → 31d |
| 11 | **Test Data** | 2010-01-26 A | 0% → 8% | 30d → 40d |
| 12 | Data Generated | 2010-01-26 A | 0% → 20% |  |
| 18 | **Data Objects** | 2010-01-26 A | 0% → 15% |  |
| 19 | Data Classes | 2010-01-26 A | 0% → 15% |  |
| 20 | **Cache** |  | 70% → 80% |  |
| 21 | Design/Code |  | 70% → 80% |  |
| 45 | **Interface / UI Design** |  | 4% → 7% |  |
| 46 | Screen Tree |  | 30% → 50% | 5.7d → 6.4d |
| 47 | Coding |  | 2% → 4% |  |

## Version 4 (saved 2010-02-08, file WebAgenda.mpp)

Note of the change: Gantt chart update

Last finish stays 2010-04-08.

Changed:

| ID | Task | Start | Complete | Total float |
| --- | --- | --- | --- | --- |
| 6 | **Database** |  | 49% → 51% |  |
| 11 | **Test Data** |  | 8% → 12% |  |
| 13 | Implemented | 2010-02-02 A | 0% → 10% |  |
| 16 | **API** |  | 2% → 5% |  |
| 17 | **Classes** |  | 2% → 5% |  |
| 18 | **Data Objects** |  | 15% → 80% | 5d → 0d |
| 19 | Data Classes |  | 15% → 80% | 5d → 0d |
| 22 | **Brokers** | 2010-02-02 A | 0% → 3% | 5d → 0d |
| 23 | Employee | 2010-02-02 A | 0% → 5% | 5d → 0d |
| 24 | Permissions | 2010-02-02 A | 0% → 15% | 5d → 0d |
| 28 | Schedule | 2010-02-02 A | 0% → 5% | 5d → 0d |
| 44 | API Complete | 2010-03-15 A | 0% → 3% |  |
| 45 | **Interface / UI Design** |  | 7% → 8% |  |
| 46 | Screen Tree |  | 50% → 60% | 6.4d → 6.75d |
| 47 | Coding |  | 4% → 5% |  |
| 56 | **System Testing** | 2010-03-16 A |  |  |
| 57 | User Testing | 2010-03-16 A | 0% → 1% |  |

## Version 5 (saved 2010-02-23, file WebAgendav0.2.mpp)

Note of the change: Updated Gantt Chart to include less resources per task. The resources assigned were arbitrary for now.

Last finish stays 2010-04-08. Complete tasks 3 → 10.

Changed:

| ID | Task | Start | Finish | Complete | Total float | Other |
| --- | --- | --- | --- | --- | --- | --- |
| 1 | **Documentation** |  |  | 33% → 41% |  |  |
| 2 | Documentation Creation (Ongoing) |  |  | 10% → 20% |  |  |
| 5 | Design Document |  | 2010-02-03 A | 95% → 100% | 46d → none |  |
| 6 | **Database** |  |  | 51% → 89% |  |  |
| 7 | **Database Design** |  | 2010-01-25 A | 98% → 100% | 31.5d → none |  |
| 9 | Table/Attribute Sizes |  | 2010-01-25 A | 95% → 100% | 31.5d → none |  |
| 10 | Design Complete | 2010-01-25 A | 2010-01-25 A | 0% → 100% | 31d → none |  |
| 11 | **Test Data** |  |  | 12% → 80% |  |  |
| 12 | Data Generated |  | 2010-02-01 A | 20% → 100% | 30.5d → none |  |
| 13 | Implemented |  | 2010-02-08 A | 10% → 100% | 30d → none |  |
| 14 | System Backups | 2010-02-09 A |  | 0% → 13% |  |  |
| 16 | **API** |  |  | 5% → 16% |  |  |
| 17 | **Classes** |  |  | 5% → 16% |  |  |
| 18 | **Data Objects** |  | 2010-02-01 A | 80% → 100% | 0d → none |  |
| 19 | Data Classes |  | 2010-02-01 A | 80% → 100% | 0d → none |  |
| 20 | **Cache** |  |  | 80% → 90% |  |  |
| 21 | Design/Code |  |  | 80% → 90% |  |  |
| 22 | **Brokers** |  |  | 3% → 28% |  |  |
| 23 | Employee |  |  | 5% → 50% |  | resources Mark H; Daniel W; Daniel K; Noorin H → Daniel W; Daniel K |
| 24 | Permissions |  |  | 15% → 25% |  | resources Mark H; Daniel W; Daniel K; Noorin H → Daniel W; Daniel K |
| 25 | Position | 2010-02-02 A |  | 0% → 25% |  | resources Mark H; Daniel W; Daniel K; Noorin H → Daniel W; Daniel K |
| 26 | Location | 2010-02-02 A |  | 0% → 25% |  | resources Mark H; Daniel W; Daniel K; Noorin H → Daniel W; Daniel K |
| 27 | ShiftTemplate | 2010-02-02 A |  | 0% → 25% |  | resources Mark H; Daniel W; Daniel K; Noorin H → Daniel W; Daniel K |
| 28 | Schedule |  |  | 5% → 25% |  | resources Mark H; Daniel W; Daniel K; Noorin H → Daniel W; Daniel K |
| 29 | Notification | 2010-02-02 A |  | 0% → 25% |  | resources Mark H; Daniel W; Daniel K; Noorin H → Daniel W; Daniel K |
| 30 | SystemSettings | 2010-02-02 A |  | 0% → 25% |  | resources Mark H; Daniel W; Daniel K; Noorin H → Daniel W; Daniel K |
| 33 | Schedule |  |  |  |  | resources Mark H; Daniel W; Daniel K; Noorin H → Daniel W; Daniel K |
| 34 | Notifications |  |  |  |  | resources Mark H; Daniel W; Daniel K; Noorin H → Mark H; Noorin H |
| 35 | Settings |  |  |  |  | resources Mark H; Daniel W; Daniel K; Noorin H → Daniel W; Daniel K |
| 36 | Users |  |  |  |  | resources Mark H; Daniel W; Daniel K; Noorin H → Mark H; Noorin H |
| 37 | Reports |  |  |  |  | resources Mark H; Daniel W; Daniel K; Noorin H → Mark H; Noorin H |
| 38 | Export |  |  |  |  | resources Mark H; Daniel W; Daniel K; Noorin H → Daniel W; Daniel K |
| 39 | Help |  |  |  |  | resources Mark H; Daniel W; Daniel K; Noorin H → Daniel W; Daniel K |
| 40 | Mail |  |  |  |  | resources Mark H; Daniel W; Daniel K; Noorin H → Mark H; Noorin H |
| 41 | Quick Links |  |  |  |  | resources Mark H; Daniel W; Daniel K; Noorin H → Mark H; Noorin H |
| 42 | Calendar |  |  |  |  | resources Mark H; Daniel W; Daniel K; Noorin H → Daniel W; Daniel K |
| 45 | **Interface / UI Design** |  |  | 8% → 10% |  |  |
| 46 | Screen Tree |  | 2010-01-25 A | 60% → 100% | 6.75d → none |  |
| 47 | Coding |  |  | 5% → 3% |  |  |

## Version 6 (saved 2010-03-02, file (WebAgenda)Mar 01, 2010 v0.4.mpp)

Note of the change: New gantt chart v4 for tuesday March 1st

Last finish stays 2010-04-08. Complete tasks 10 → 11.

Changed:

| ID | Task | Start | Finish | Complete | Total float |
| --- | --- | --- | --- | --- | --- |
| 1 | **Documentation** |  |  | 41% → 49% |  |
| 2 | Documentation Creation (Ongoing) |  |  | 20% → 30% |  |
| 16 | **API** |  |  | 16% → 20% |  |
| 17 | **Classes** |  |  | 16% → 20% |  |
| 22 | **Brokers** |  |  | 28% → 37% |  |
| 23 | Employee |  | 2010-02-15 A | 50% → 100% | 0d → none |
| 24 | Permissions |  |  | 25% → 45% |  |
| 45 | **Interface / UI Design** |  |  | 10% → 22% |  |
| 47 | Coding |  |  | 3% → 20% |  |
| 48 | Integration | 2010-02-16 A |  | 0% → 5% |  |

## Version 7 (saved 2010-03-02, file (WebAgenda)Mar 01, 2010 v0.5.mpp)

Note of the change: uploading gantt chart

Last finish stays 2010-04-08.

Changed:

| ID | Task | Other |
| --- | --- | --- |
| 2 | Documentation Creation (Ongoing) | resources Mark H; Daniel W; Daniel K; Noorin H → M H; D W; D K; N H |
| 3 | Team Charter | resources Mark H; Daniel W; Daniel K; Noorin H → M H; D W; D K; N H |
| 4 | Initial Gantt Chart | resources Daniel W → D W |
| 5 | Design Document | resources Mark H; Daniel W; Daniel K; Noorin H → M H; D W; D K; N H |
| 8 | Finalize Design | resources Noorin H; Daniel W → N H; D W |
| 9 | Table/Attribute Sizes | resources Noorin H → N H |
| 12 | Data Generated | resources Daniel W → D W |
| 13 | Implemented | resources Daniel W → D W |
| 14 | System Backups | resources Daniel W → D W |
| 19 | Data Classes | resources Daniel W; Daniel K → D W; D K |
| 21 | Design/Code | resources Daniel K → D K |
| 23 | Employee | resources Daniel W; Daniel K → D W; D K |
| 24 | Permissions | resources Daniel W; Daniel K → D W; D K |
| 25 | Position | resources Daniel W; Daniel K → D W; D K |
| 26 | Location | resources Daniel W; Daniel K → D W; D K |
| 27 | ShiftTemplate | resources Daniel W; Daniel K → D W; D K |
| 28 | Schedule | resources Daniel W; Daniel K → D W; D K |
| 29 | Notification | resources Daniel W; Daniel K → D W; D K |
| 30 | SystemSettings | resources Daniel W; Daniel K → D W; D K |
| 33 | Schedule | resources Daniel W; Daniel K → D W; D K |
| 34 | Notifications | resources Mark H; Noorin H → M H; N H |
| 35 | Settings | resources Daniel W; Daniel K → D W; D K |
| 36 | Users | resources Mark H; Noorin H → M H; N H |
| 37 | Reports | resources Mark H; Noorin H → M H; N H |
| 38 | Export | resources Daniel W; Daniel K → D W; D K |
| 39 | Help | resources Daniel W; Daniel K → D W; D K |
| 40 | Mail | resources Mark H; Noorin H → M H; N H |
| 41 | Quick Links | resources Mark H; Noorin H → M H; N H |
| 42 | Calendar | resources Daniel W; Daniel K → D W; D K |
| 46 | Screen Tree | resources Mark H; Noorin H → M H; N H |
| 47 | Coding | resources Mark H; Noorin H → M H; N H |
| 48 | Integration | resources Mark H; Daniel W; Daniel K; Noorin H → M H; D W; D K; N H |
| 51 | Part 1 | resources Daniel K → D K |
| 52 | Part 2 | resources Daniel K → D K |
| 53 | Part 3 | resources Daniel K → D K |
| 54 | Licensing | resources Daniel K → D K |
| 57 | User Testing | resources Mark H; Daniel W; Daniel K; Noorin H → M H; D W; D K; N H |
| 58 | Load Testing | resources Mark H; Daniel W; Daniel K; Noorin H → M H; D W; D K; N H |
| 59 | Backup/Recovery Testing | resources Mark H; Daniel W; Daniel K; Noorin H → M H; D W; D K; N H |
| 60 | Installer Testing | resources Mark H; Daniel W; Daniel K; Noorin H → M H; D W; D K; N H |

## Version 8 (saved 2010-03-09, file (WebAgenda)Mar 08, 2010 v0.6.mpp)

Note of the change: uploading gantt chart

Last finish stays 2010-04-08.

Changed:

| ID | Task | Complete |
| --- | --- | --- |
| 16 | **API** | 20% → 27% |
| 17 | **Classes** | 20% → 27% |
| 22 | **Brokers** | 37% → 56% |
| 24 | Permissions | 45% → 80% |
| 25 | Position | 25% → 80% |
| 26 | Location | 25% → 80% |
| 28 | Schedule | 25% → 30% |
| 56 | **System Testing** | 0% → 1% |
| 57 | User Testing | 1% → 5% |

## Version 9 (saved 2010-03-13, file (WebAgenda)Mar 08, 2010 v0.6.mpp)

Note of the change: PositionBroker now can create and delete POSSKILL entries when positions are created and deleted followed by a parameter with non-null skill[] arrays.

Last finish stays 2010-04-08.

Added:

| ID | Task | Duration | Start | Finish | Constraint |
| --- | --- | --- | --- | --- | --- |
| 29 | Skill | 11d? | 2010-02-01 A | 2010-02-16 | start no earlier than 2010-02-01 |

Changed:

| ID | Task | Start | Finish | Duration | Complete | Total float |
| --- | --- | --- | --- | --- | --- | --- |
| 16 | **API** |  |  |  | 27% → 32% |  |
| 17 | **Classes** |  |  |  | 27% → 32% |  |
| 22 | **Brokers** | 2010-02-02 A → 2010-02-01 A (-1d) | 2010-02-15 → 2010-02-16 (+1d) | 10d? → 11d? | 56% → 65% | 0d → 37.5d |
| 30 | Notification |  |  |  | 25% → 80% |  |

## Version 10 (saved 2010-03-24, file (WebAgenda)Mar 23, 2010 v0.7.mpp)

Note of the change: Whew! Finally squashed that bug...

Last finish stays 2010-04-08. Complete tasks 11 → 17.

Removed: 31 SystemSettings

Changed:

| ID | Task | Start | Finish | Complete | Total float | Predecessors | Other |
| --- | --- | --- | --- | --- | --- | --- | --- |
| 1 | **Documentation** |  |  | 49% → 85% |  |  |  |
| 2 | Documentation Creation (Ongoing) |  |  | 30% → 80% |  |  |  |
| 6 | **Database** |  |  | 89% → 94% |  |  |  |
| 11 | **Test Data** |  |  | 80% → 88% |  |  |  |
| 14 | System Backups |  |  | 13% → 50% |  |  |  |
| 16 | **API** |  |  | 32% → 44% |  |  |  |
| 17 | **Classes** |  |  | 32% → 44% |  |  |  |
| 20 | **Connections** |  | 2010-02-01 A | 90% → 100% | 48d → none |  | was named Cache |
| 21 | Design/Code |  | 2010-02-01 A | 90% → 100% | 48d → none |  |  |
| 22 | **Brokers** |  |  | 65% → 98% | 37.5d → 0d |  |  |
| 24 | Permissions |  | 2010-02-15 A | 80% → 100% | 0d → none |  |  |
| 25 | Position |  | 2010-02-15 A | 80% → 100% | 0d → none |  |  |
| 26 | Location |  | 2010-02-15 A | 80% → 100% | 0d → none |  |  |
| 27 | ScheduleTemplate |  |  | 25% → 90% |  |  | was named ShiftTemplate |
| 28 | Schedule |  |  | 30% → 90% |  |  |  |
| 29 | Skill |  | 2010-02-16 A | 80% → 100% | 37.5d → none |  |  |
| 30 | Notification |  | 2010-02-15 A | 80% → 100% | 0d → none |  |  |
| 31 | Brokers Complete |  |  |  |  | 23, 24, 28, 27, 25, 26, 30, SystemSettings → 23, 24, 28, 27, 25, 26, 30 |  |
| 36 | Employees |  |  |  |  |  | was named Users |
| 45 | **Interface / UI Design** |  |  | 22% → 78% | 5d → 6.4d |  |  |
| 47 | Coding |  |  | 20% → 80% |  |  |  |
| 48 | Integration |  |  | 5% → 70% | 5d → 6.4d |  |  |
| 50 | **Installer** | 2010-03-16 A |  | 0% → 18% |  |  |  |
| 51 | Part 1 | 2010-03-16 A |  | 0% → 20% | 5d → 6d |  |  |
| 54 | Licensing | 2010-03-24 A |  | 0% → 50% |  |  |  |
| 56 | **System Testing** |  |  | 1% → 20% |  |  |  |
| 57 | User Testing |  |  | 5% → 70% |  |  |  |

## Version 11 (saved 2010-03-30, file (WebAgenda)Mar 30, 2010 v0.8.mpp)

Note of the change: Up-to-date gantt chart update. Also adding progress report to svn update.

Last finish stays 2010-04-08.

Changed:

| ID | Task | Start | Complete | Total float |
| --- | --- | --- | --- | --- |
| 16 | **API** |  | 44% → 52% |  |
| 17 | **Classes** |  | 44% → 52% |  |
| 32 | **Widgets** | 2010-02-16 A | 0% → 15% | 0d → 18d |
| 34 | Notifications | 2010-02-16 A | 0% → 80% |  |
| 45 | **Interface / UI Design** |  | 78% → 83% |  |
| 47 | Coding |  | 80% → 85% | 5d → 0d |
| 48 | Integration |  | 70% → 75% | 6.4d → 0d |
| 49 | Interface Compete | 2010-03-15 A | 0% → 70% | 5d → 6.4d |
